# Project LIMS Initiation

How a schedule from MS Project changed from version to version. A marks actual dates.

## Version 1 (data date 2026-02-19, saved 2026-01-22, file CIS2261_Project_GanttChart_Farhan_Fardin.mpp)

Note of the change: PROJECT: Project Statement and the Gantt chart uploaded

| ID | WBS | Task | Duration | Start | Finish | Predecessors | Total float | Constraint |
| --- | --- | --- | --- | --- | --- | --- | --- | --- |
| 1 | 1 | **Draft** | 15d | 2026-01-05 | 2026-01-23 |  |  |  |
| 2 |  | Create Work Schedule/Gantt Chart | 9d | 2026-01-05 | 2026-01-15 |  | 39d | finish no earlier than 2026-01-15 |
| 3 |  | Create Project Statement | 6d | 2026-01-16 | 2026-01-23 | 2 | 39d | finish no earlier than 2026-01-23 |
| 4 | 2 | **System Analysis** | 8d | 2026-01-26 | 2026-02-04 |  |  |  |
| 5 |  | Meet with Key Stakeholders | 2d | 2026-01-26 | 2026-01-27 | 3SS | 26d |  |
| 6 |  | Event based analysis | 1d | 2026-01-28 | 2026-01-28 | 5 | 26d |  |
| 7 |  | Creat domain class diagram | 1d | 2026-01-29 | 2026-01-29 | 6 | 26d |  |
| 8 |  | Create single use case diagrams | 1d | 2026-01-30 | 2026-01-30 | 7 | 26d |  |
| 9 |  | Create fully developed use case descriptions | 1d | 2026-02-02 | 2026-02-02 | 8 | 26d |  |
| 10 |  | Create SSDs | 1d | 2026-02-03 | 2026-02-03 | 9 | 26d |  |
| 11 | 3 | **System Design** | 8d | 2026-02-04 | 2026-02-13 |  |  |  |
| 12 |  | Architectural Design | 1d | 2026-02-04 | 2026-02-04 | 10 | 26d |  |
| 13 |  | Create design class diagram | 1d | 2026-02-05 | 2026-02-05 | 12 | 26d | finish no earlier than 2026-02-05 |
| 14 |  | Create Three-layered sequence diagram | 1d | 2026-02-06 | 2026-02-06 | 13 | 26d |  |
| 15 |  | Create package diagram | 1d | 2026-02-09 | 2026-02-09 | 14 | 26d |  |
| 16 |  | Create ERD | 1d | 2026-02-10 | 2026-02-10 | 15 | 26d | finish no earlier than 2026-02-10 |
| 17 |  | Create Reports for selected output use cases | 1d | 2026-02-11 | 2026-02-11 | 16 | 26d |  |
| 18 |  | Create UI for selected input use cases | 1d | 2026-02-12 | 2026-02-12 | 17 | 26d |  |
| 19 |  | System Controls and Security | 1d | 2026-02-13 | 2026-02-13 | 14FF | 25d | start no earlier than 2026-02-13 |
| 20 | 4 | **System Implementation** | 16d | 2026-02-16 | 2026-03-09 |  | 9d |  |
| 21 |  | Database Implementation | 2d | 2026-02-16 | 2026-02-17 |  | 9d | start no earlier than 2026-02-16 |
| 22 |  | Coding | 8d | 2026-02-18 | 2026-02-27 | 21 | 9d |  |
| 23 |  | Testing | 5d | 2026-03-02 | 2026-03-06 | 22 | 9d |  |
| 24 |  | Documentation | 1d | 2026-03-09 | 2026-03-09 | 23 | 9d |  |
| 25 | 5 | **Deployment** | 9d | 2026-03-10 | 2026-03-20 |  | 0d |  |
| 26 |  | Convert/Initialize Data | 1d | 2026-03-10 | 2026-03-10 |  | 0d | start no earlier than 2026-03-10 |
| 27 |  | Training/Documentation | 5d | 2026-03-11 | 2026-03-17 | 26 | 0d |  |
| 28 |  | User Acceptance/Stress testing | 2d | 2026-03-18 | 2026-03-19 | 27 | 0d |  |
| 29 |  | Configure the Production Environment | 1d | 2026-03-20 | 2026-03-20 | 28 | 0d |  |
| 30 |  | Package, Install, and Deploy Components | 1d | 2026-03-20 | 2026-03-20 | 28 | 0d |  |
| 31 | 6 | **Reporting** | 26d | 2026-01-30 | 2026-03-06 |  | 10d |  |
| 32 |  | Status Report 1 | 1d | 2026-01-30 | 2026-01-30 | 3 | 35d | start no earlier than 2026-01-30 |
| 33 |  | Status Report 2 | 1d | 2026-02-20 | 2026-02-20 | 10FF | 20d | start no earlier than 2026-02-20 |
| 34 |  | Status Report 3 | 1d | 2026-03-06 | 2026-03-06 | 19FF | 10d | start no earlier than 2026-03-06 |

## Version 2 (data date 2026-02-19, saved 2026-03-12, file CIS2261_Project_LIMS_Gantt_Farhan_Fardin.mpp)

Note of the change: PROJECT: Documentation added !

Last finish 2026-03-20 → 2026-03-13 (-7d). Complete tasks 0 → 29.

Added:

| ID | Task | Duration | Start | Finish | Predecessors | Constraint | Resources |
| --- | --- | --- | --- | --- | --- | --- | --- |
| 35 | Status Report 4 | 1d | 2026-03-13 A | 2026-03-13 A | 19FF | start no earlier than 2026-03-13 | Project Manager |

Changed:

| ID | Task | Start | Finish | Duration | Complete | Total float | Other |
| --- | --- | --- | --- | --- | --- | --- | --- |
| 1 | **Draft** | 2026-01-05 A | 2026-01-23 A |  | 0% → 100% |  |  |
| 2 | Create Work Schedule/Gantt Chart | 2026-01-05 A | 2026-01-15 A |  | 0% → 100% | 39d → none |  |
| 3 | Create Project Statement | 2026-01-16 A | 2026-01-23 A |  | 0% → 100% | 39d → none |  |
| 4 | **System Analysis** | 2026-01-26 A |  |  | 0% → 100% |  |  |
| 5 | Meet with Key Stakeholders | 2026-01-26 A | 2026-01-27 A |  | 0% → 100% | 26d → none |  |
| 6 | Event based analysis | 2026-01-28 A | 2026-01-28 A |  | 0% → 100% | 26d → none |  |
| 7 | Creat domain class diagram | 2026-01-29 A | 2026-01-29 A |  | 0% → 100% | 26d → none |  |
| 8 | Create single use case diagrams | 2026-01-30 A | 2026-01-30 A |  | 0% → 100% | 26d → none |  |
| 9 | Create fully developed use case descriptions | 2026-02-02 A | 2026-02-02 A |  | 0% → 100% | 26d → none |  |
| 10 | Create SSDs | 2026-02-03 A | 2026-02-03 A |  | 0% → 100% | 26d → none |  |
| 11 | **System Design** | 2026-02-04 A | 2026-02-13 → 2026-02-24 A (+11d) | 8d → 15d | 0% → 100% |  |  |
| 12 | Architectural Design | 2026-02-04 A | 2026-02-04 A |  | 0% → 100% | 26d → none |  |
| 13 | Create design class diagram | 2026-02-05 A | 2026-02-05 → 2026-02-06 A (+1d) | 1d → 2d | 0% → 100% | 26d → none |  |
| 14 | Create Three-layered sequence diagram | 2026-02-06 → 2026-02-09 A (+3d) | 2026-02-06 → 2026-02-10 A (+4d) | 1d → 2d | 0% → 100% | 26d → none |  |
| 15 | Create package diagram | 2026-02-09 → 2026-02-11 A (+2d) | 2026-02-09 → 2026-02-12 A (+3d) | 1d → 2d | 0% → 100% | 26d → none |  |
| 16 | Create ERD | 2026-02-10 → 2026-02-13 A (+3d) | 2026-02-10 → 2026-02-16 A (+6d) | 1d → 2d | 0% → 100% | 26d → none |  |
| 17 | Create Reports for selected output use cases | 2026-02-11 → 2026-02-17 A (+6d) | 2026-02-11 → 2026-02-19 A (+8d) | 1d → 3d | 0% → 100% | 26d → none |  |
| 18 | Create UI for selected input use cases | 2026-02-12 → 2026-02-20 A (+8d) | 2026-02-12 → 2026-02-23 A (+11d) | 1d → 2d | 0% → 100% | 26d → none |  |
| 19 | System Controls and Security | 2026-02-13 → 2026-02-24 A (+11d) | 2026-02-13 → 2026-02-24 A (+11d) |  | 0% → 100% | 25d → none | constraint start no earlier than 2026-02-13 → finish no earlier than 2026-02-24; resources Project Manager; System Analyst/ Developer → System Analyst/ Developer |
| 20 | **System Implementation** | 2026-02-16 A | 2026-03-09 A |  | 0% → 100% | 9d → none |  |
| 21 | Database Implementation | 2026-02-16 A | 2026-02-17 A |  | 0% → 100% | 9d → none | resources System Analyst/ Developer → Project Manager |
| 22 | Coding | 2026-02-18 A | 2026-02-27 A |  | 0% → 100% | 9d → none | resources System Analyst/ Developer → Project Manager |
| 23 | Testing | 2026-03-02 A | 2026-03-06 A |  | 0% → 100% | 9d → none |  |
| 24 | Documentation | 2026-03-09 A | 2026-03-09 A |  | 0% → 100% | 9d → none | resources Project Manager → System Analyst/ Developer |
| 25 | **Deployment** | 2026-03-10 A | 2026-03-20 → 2026-03-13 A (-7d) | 9d → 4d | 0% → 100% | 0d → none |  |
| 26 | Convert/Initialize Data | 2026-03-10 A | 2026-03-10 A |  | 0% → 100% | 0d → none | resources System Analyst/ Developer; Project Manager → Project Manager |
| 27 | Training/Documentation | 2026-03-11 A | 2026-03-17 → 2026-03-11 A (-6d) | 5d → 1d | 0% → 100% | 0d → none | resources System Analyst/ Developer; Project Manager → Project Manager |
| 28 | User Acceptance/Stress testing | 2026-03-18 → 2026-03-12 A (-6d) | 2026-03-19 → 2026-03-12 A (-7d) | 2d → 1d | 0% → 100% | 0d → none |  |
| 29 | Configure the Production Environment | 2026-03-20 → 2026-03-13 A (-7d) | 2026-03-20 → 2026-03-13 A (-7d) |  | 0% → 100% | 0d → none |  |
| 30 | Package, Install, and Deploy Components | 2026-03-20 → 2026-03-13 A (-7d) | 2026-03-20 → 2026-03-13 A (-7d) |  | 0% → 100% | 0d → none |  |
| 31 | **Reporting** | 2026-01-30 A | 2026-03-06 → 2026-03-13 A (+7d) | 26d → 31d | 0% → 100% | 10d → none |  |
| 32 | Status Report 1 | 2026-01-30 A | 2026-01-30 A |  | 0% → 100% | 35d → none |  |
| 33 | Status Report 2 | 2026-02-20 A | 2026-02-20 A |  | 0% → 100% | 20d → none |  |
| 34 | Status Report 3 | 2026-03-06 A | 2026-03-06 A |  | 0% → 100% | 10d → none |  |
